# Construction schedule v1.0

Schedule from an IFC model, 2026-11-02 to 2027-09-21.
Carport HW - Rev1 through first mass-production shipment release

## Schedule

| ID | Activity | Type | Duration | Start | Finish | Predecessors | Planned start | Planned finish | Total float | Free float |
| --- | --- | --- | --- | --- | --- | --- | --- | --- | --- | --- |
| 1 | **01 - Current position and program decisions** |  | 25d | 2026-11-02 | 2026-12-04 |  | 2026-11-02 | 2026-11-02 | 12d | 0d |
| 1.1 | Planning start - Rev0 complete; Rev1 schematic in review and layout underway | milestone | 0d | 2026-11-02 | 2026-11-02 |  |  |  | 12d | 0d |
| 1.2 | Confirm US/Canada launch requirements and installation envelope |  | 5d | 2026-11-02 | 2026-11-06 | 1.1 |  |  | 14d | 0d |
| 1.3 | Agree certification and qualification matrix with accredited lab |  | 10d | 2026-11-09 | 2026-11-20 | 1.2 | 2026-11-02 | 2026-11-13 | 14d | 0d |
| 1.4 | Select overseas build partners and reserve indicative capacity |  | 10d | 2026-11-09 | 2026-11-20 | 1.2 | 2026-11-02 | 2026-11-13 | 14d | 0d |
| 1.5 | Approve sample allocation and destructive-test budgets |  | 5d | 2026-11-23 | 2026-11-27 | 1.3, 1.4 | 2026-11-02 | 2026-11-06 | 14d | 0d |
| 1.6 | Evaluate physical SIM / eUICC provider and roaming |  | 15d | 2026-11-09 | 2026-11-27 | 1.2 | 2026-11-02 | 2026-11-20 | 37d | 30d |
| 1.7 | Evaluate nRF9151 satellite service and supported hardware/firmware |  | 20d | 2026-11-09 | 2026-12-04 | 1.2 | 2026-11-02 | 2026-11-27 | 32d | 25d |
| 1.8 | G0 - Requirements, test strategy and supplier assumptions accepted | milestone | 0d | 2026-11-27 | 2026-11-27 | 1.3, 1.4, 1.5 | 2026-11-02 | 2026-11-02 | 37d | 30d |
| 2 | **02 - Rev1 PCB and prototype housing release** |  | 30d | 2026-11-02 | 2026-12-11 |  | 2026-11-02 | 2026-11-02 | 12d | 0d |
| 2.1 | Close Rev1 schematic review and BOM metadata |  | 7d | 2026-11-02 | 2026-11-10 | 1.1 |  |  | 12d | 0d |
| 2.2 | Complete Rev1 routing and RF / power / mechanical review |  | 10d | 2026-11-11 | 2026-11-24 | 2.1 | 2026-11-02 | 2026-11-13 | 12d | 0d |
| 2.3 | Rev1 PCBA DFM, AVL availability and release package |  | 5d | 2026-11-25 | 2026-12-01 | 2.2, 1.4 | 2026-11-02 | 2026-11-06 | 12d | 0d |
| 2.4 | G1 - Release Rev1 PCBA prototype run | milestone | 0d | 2026-12-01 | 2026-12-01 | 2.3 | 2026-11-02 | 2026-11-02 | 12d | 0d |
| 2.5 | Design clamshell and interfaces for prototype manufacture |  | 10d | 2026-11-09 | 2026-11-20 | 1.2 | 2026-11-02 | 2026-11-13 | 17d | 0d |
| 2.6 | Select humidity vent and MEMS acoustic membrane stacks |  | 10d | 2026-11-09 | 2026-11-20 | 1.2 | 2026-11-02 | 2026-11-13 | 17d | 0d |
| 2.7 | Print housing variants and hand-build membrane/grill/pigtail prototypes |  | 10d | 2026-11-23 | 2026-12-04 | 2.5, 2.6 | 2026-11-02 | 2026-11-13 | 17d | 0d |
| 2.8 | Evaluate printed enclosure fit, acoustic/RH and cable interfaces |  | 5d | 2026-12-07 | 2026-12-11 | 2.7, 2.2 | 2026-11-02 | 2026-11-06 | 17d | 10d |
| 3 | **03 - Rev1 EVT build and integrated learning** |  | 43d | 2026-11-11 | 2027-01-19 |  | 2026-11-02 | 2026-11-02 | 7d | 0d |
| 3.1 | Fabricate and assemble Rev1 engineering boards |  | 10d | 2026-12-02 | 2026-12-15 | 2.4, 1.5 | 2026-12-01 | 2026-12-17 | 12d | 0d |
| 3.2 | Rev1 board shipment, import and incoming inspection |  | 5d | 2026-12-16 | 2026-12-20 | 3.1 | 2026-11-02 | 2026-11-06 | 18d | 0d |
| 3.3 | External gate - Rev1 bring-up firmware and diagnostic tools |  | 7d | 2026-11-11 | 2026-11-19 | 2.1 | 2026-11-02 | 2026-11-20 | 28d | 21d |
| 3.4 | Bring up Rev1 PCBA with current-limited staged power |  | 5d | 2026-12-21 | 2027-01-05 | 3.2, 3.3 | 2026-11-02 | 2026-11-06 | 7d | 0d |
| 3.5 | Rev1 power, input fault screening and radio transient tests |  | 10d | 2027-01-06 | 2027-01-19 | 3.4 | 2026-11-02 | 2026-11-13 | 7d | 0d |
| 3.6 | Rev1 antenna, coexistence and EMC pre-scan |  | 10d | 2027-01-06 | 2027-01-19 | 3.4, 2.8 | 2026-11-02 | 2026-11-13 | 7d | 0d |
| 3.7 | Rev1 integrated membrane, housing and sensor experiments |  | 10d | 2027-01-06 | 2027-01-19 | 3.4, 2.8 | 2026-11-02 | 2026-11-13 | 7d | 0d |
| 3.8 | G2 - Rev1 EVT findings and Rev2 change list approved | milestone | 0d | 2027-01-19 | 2027-01-19 | 3.5, 3.6, 3.7, 1.8 | 2026-11-02 | 2026-11-02 | 7d | 0d |

Notes:
- 1.1: Status supplied 2026-10-31. Historical completion dates and percent complete are unknown; this is a planning anchor, not the actual Rev0 completion date.
- 1.2: Approved requirements: intended install location; 12 V baseline versus 24 V requirement; temperature, humidity, ingress, acoustic, GNSS, antenna, vehicle mounting, safe behavior and operating/survival power envelope. US + Canada launch confirmed; other markets are later change-controlled scope.
- 1.3: Written US FCC / Canada ISED route, exact ESP32 and nRF module grants/integration conditions, antennas and gains, RF exposure/use distance and simultaneous transmit cases; host emissions, GNSS receive performance, cellular/operator and Bluetooth qualification scope. Evaluate safety/battery/shipping and vehicle approval applicability. Lab quote, sample counts, modes and slot strategy recorded. Agree which electrical, conducted RF, network/protocol and documentation results may be accepted from Rev2 in printed housings; identify enclosure-sensitive tests, representative T1 sample requirements and T2 delta/retest rules.
- 1.4: PCBA, mold/assembly and membrane/cable vendors shortlisted; quotes, Incoterms, import responsibility, tooling ownership, payment/release gates, English controlled drawings, weekly overlap meeting and change approval process. Lead times remain estimates until supplier commits. Confirm actual holidays/country.
- 1.5: Allocate serialized boards/housings by test; suggested Rev1 15 boards, Rev2 30 boards, T1 20 sets, T2 60 sets, PVT 100 units subject to lab needs, destructive tests, spares, budget and demand. Counts are proposals, not purchase authorizations. Allocate separate early Rev2 electrical/conducted test units, T1 chamber/RF units, destructive-test spares and retained reference samples so parallel tracks do not share unavailable hardware.
- 1.6: Provider comparison covers US/Canada LTE-M/NB-IoT coverage, roaming/permanent roaming, PSM/eDRX, APN, activation, provisioning, supply/form factor, profile lifecycle, cost and operator approvals. Bench attach evidence and fallback physical SIM choice. Do not assume eSIM is merely a socket substitution.
- 1.7: Check actual nRF9151 build code, compatible NTN modem/NCS release, provider service/bands/coverage, antenna/sky view, TN/NTN transitions, SIM profile, power budget, test access and approval route. Record working eval evidence or remaining gaps; not yet a launch promise.
- 1.8: Requirements, launch markets, qualification plan, sample budget and accountable role assignments accepted. Named owners and capacity still to be assigned.
- 2.1: Resolve reviewer comments and R2-03 MPN/tolerance/voltage/dielectric metadata; regenerate correct dev/production variants, BOM and netlist; run Altium compiler/ERC; unresolved risks have written containment. Saved source, reviewed PDF and exports agree.
- 2.2: Layout review checks switcher hot loops, return paths, antenna keep-outs/feed/matching, GNSS isolation, debug/test access, thermal copper, USB, pigtail, button/LED alignment, board outline and tolerances. DRC and 3D clearance review pass.
- 2.3: CM acknowledges controlled fabrication/assembly package, stackup, impedance, stencil, polarity, firmware/debug access, approved substitutions, DNP variants and long-lead material status. Do not treat old exports as current production files.
- 2.4: Signed Rev1 build release; quote and proposed lot approved; Rev1 is an engineering prototype with fault-test restrictions documented.
- 2.5: Two plastic shell halves; fastening/seal strategy, wall/rib/draft and tool parting concept. USB access/sealing, power pigtail strain-relief and pull load path, user button/RGB light path, ESP32 reset/boot and nRF reset access, mounting and antenna clearances are defined.
- 2.6: Evaluate ePTFE humidity exchange and acoustic vent separately: RH response, mic insertion loss/bandwidth, cavity geometry, adhesives, supported bond land, contamination/condensation, grill/screen protection and material compatibility. Sharing a port requires evidence; vent rating is not whole-product IP certification.
- 2.7: Printed shell fits and hand-applied ePTFE, screen/grill, light pipe, seals and strain relief available; build record captures orientation/material/adhesive/cure. Include vent-only coupons and cable pull fixtures.
- 2.8: Fit real board or verified dimensional surrogate; test button/LED/dev access, USB insertion, pigtail pull/bend, grille damage, mic response/RH lag and condensation. Printed/handmade performance is screening evidence, not molded-process qualification.
- 3.1: CM assembly report, AOI/X-ray where appropriate, component traceability, serial numbers and approved substitutions; staged release of first boards if feasible.
- 3.2: Air shipment received with customs paperwork, count and visual inspection; shipping damage and build discrepancies logged.
- 3.3: Versioned Rev1 pin map, flash/storage change, sensor addressing, charger source policy, USB-only latch-off recovery, rail sequencing/back-power prevention, fuel-gauge configuration and diagnostic capture ready. Dashboard/carportpy/proto compatible. Deliverables managed in software backlogs.
- 3.4: Supply currents/rails verified before radios; USB enumeration, debug recovery, sensor/mic/button/RGB, flash, reset/boot and UART tested. Record boot firmware, serial and measurement setup.
- 3.5: Measure reverse/positive stress within declared envelope, brownout and crank recovery, USB-only/battery absent/depleted modes, charge/source limits after reset, 3.2 V radio droop, thermal/efficiency and sleep draw; no unresolved unsafe stress. Destructive tests use allocated units.
- 3.6: In representative enclosure/cabling, assess BLE/Wi-Fi/cellular transmit and GNSS receive sensitivity/TTFF, coexistence/desense and switcher noise; bench/conducted checks plus radiated pre-scan; antenna candidates, retuning needs and lab modes documented.
- 3.7: RH step response/hysteresis, thermal self-heating, acoustic response/noise, condensation/ingress screening and cable pull/bend. Confirm antenna placement, button feel/light visibility and development button access on actual assembly.
- 3.8: Issue log contains root cause, severity, evidence and Rev2 disposition; power/RF/mechanical feasibility demonstrated. No automatic pass because boards powered up.

| ID | Activity | Type | Duration | Start | Finish | Predecessors | Planned start | Planned finish | Total float | Free float |
| --- | --- | --- | --- | --- | --- | --- | --- | --- | --- | --- |
| 4 | **04 - Rev2 and tool-ready design freeze** |  | 27d | 2027-01-19 | 2027-02-26 |  | 2026-11-02 | 2026-11-02 | 0d |  |
| 4.1 | G3a - Cellular SIM and satellite launch decision | milestone | 0d | 2027-01-19 | 2027-01-19 | 1.6, 1.7, 3.8 | 2026-11-02 | 2026-11-02 | 7d | 0d |
| 4.2 | Rev2 electrical changes, worst-case closure and schematic review |  | 10d | 2027-01-20 | 2027-02-02 | 3.8, 4.1 | 2026-11-02 | 2026-11-13 | 7d | 0d |
| 4.3 | Rev2 layout, RF and DFM review |  | 10d | 2027-02-03 | 2027-02-17 | 4.2 | 2026-11-02 | 2026-11-13 | 7d |  |
| 4.4 | Tool-ready enclosure, vent process and cable assembly DFM |  | 10d | 2027-01-20 | 2027-02-02 | 3.8, 4.1 | 2026-11-02 | 2026-11-13 | 12d | 0d |
| 4.5 | Cross-discipline design risk and verification review |  | 5d | 2027-02-03 | 2027-02-09 | 4.2, 4.4 | 2026-11-02 | 2026-11-06 | 12d |  |
| 4.6 | Approve mold design, tooling contract and trial plan |  | 5d | 2027-02-22 | 2027-02-26 | 4.4, 1.4 | 2026-11-02 | 2026-11-06 | 0d |  |
| 4.7 | G3 - Release Rev2 PCBA and housing tooling | milestone | 0d | 2027-02-26 | 2027-02-26 | 4.3, 4.6, 4.5, 1.3 | 2026-11-02 | 2026-11-02 | 0d |  |
| 5 | **05 - Rev2 / T1 first molded integration** |  | 33d | 2027-03-01 | 2027-04-15 |  | 2026-11-02 | 2026-11-02 | 0d |  |
| 5.1 | Build Rev2 production-intent boards |  | 15d | 2027-03-01 | 2027-03-19 | 4.7 | 2026-11-02 | 2026-11-20 | 0d |  |
| 5.2 | Ship and inspect Rev2 boards |  | 5d | 2027-03-20 | 2027-03-24 | 5.1 | 2026-11-02 | 2026-11-06 | 0d |  |
| 5.3 | External gate - Rev2 DVT and RF test firmware |  | 15d | 2027-03-01 | 2027-03-19 | 4.7 | 2026-11-02 | 2026-11-20 | 3d | 0d |
| 5.4 | Rev2 incoming bring-up and early lab sample release |  | 2d | 2027-03-25 | 2027-03-29 | 5.2, 5.3 | 2026-11-02 | 2026-11-03 | 0d |  |
| 5.5 | Complete Rev2 electrical fix verification alongside lab testing |  | 8d | 2027-03-30 | 2027-04-08 | 5.4 | 2026-11-02 | 2026-11-11 | 0d |  |
| 5.6 | T1 - Cut clamshell and included strain-relief tooling |  | 20d | 2027-03-01 | 2027-03-26 | 4.7 | 2026-11-02 | 2026-11-27 | 0d |  |
| 5.7 | T1 - First shots, supplier metrology and assembly samples |  | 5d | 2027-03-29 | 2027-04-02 | 5.6 | 2026-11-02 | 2026-11-06 | 0d |  |
| 5.8 | T1 - Air shipment and incoming sample inspection |  | 5d | 2027-04-03 | 2027-04-07 | 5.7 | 2026-11-02 | 2026-11-06 | 1d |  |
| 5.9 | T1 - Mechanical and electrical assembly evaluation |  | 5d | 2027-04-09 | 2027-04-15 | 5.8, 5.5 | 2026-11-02 | 2026-11-06 | 0d |  |
| 5.10 | G4 - T1 integrated evaluation and correction list accepted | milestone | 0d | 2027-04-15 | 2027-04-15 | 5.9 | 2026-11-02 | 2026-11-02 | 0d |  |
| 5.11 | Rev2 EMC / RF readiness pre-scan using prototype housing |  | 10d | 2027-03-30 | 2027-04-12 | 5.4, 2.8, 7.1 | 2026-11-02 | 2026-11-13 | 3d |  |
| 6 | **06 - T2 correction and preproduction validation** |  | 33d | 2027-04-16 | 2027-06-02 |  | 2026-11-02 | 2026-11-02 | 0d |  |
| 6.1 | Freeze T2 correction package and final test limits |  | 5d | 2027-04-16 | 2027-04-22 | 5.10, 5.11 | 2026-11-02 | 2026-11-06 | 0d |  |
| 6.2 | T2 - Tool corrections and process adjustments |  | 10d | 2027-04-23 | 2027-05-11 | 6.1 | 2026-11-02 | 2026-11-13 | 0d |  |
| 6.3 | T2 - Repeat trial and supplier first-article inspection |  | 2d | 2027-05-12 | 2027-05-13 | 6.2 | 2026-11-02 | 2026-11-03 | 0d |  |
| 6.4 | T2 - Air shipment and incoming inspection |  | 5d | 2027-05-14 | 2027-05-18 | 6.3 | 2026-11-02 | 2026-11-06 | 0d |  |
| 6.5 | T2 - Integrated mechanical and electrical evaluation |  | 10d | 2027-05-19 | 2027-06-02 | 6.4 | 2026-11-02 | 2026-11-13 | 0d |  |
| 6.6 | G5 - T2 preproduction candidate accepted | milestone | 0d | 2027-06-02 | 2027-06-02 | 6.5 | 2026-11-02 | 2026-11-02 | 0d |  |

Notes:
- 4.1: Select provider/form factor and antenna/band plan. NTN either included with supported build/firmware/service and certification budget, or deferred with feature disabled and excluded from launch claims. Unresolved NTN requirement holds Rev2 freeze; no implicit terrestrial-only waiver.
- 4.2: Rev2 closes EVT defects, input protection and power margins, selected connectivity/SIM, release variant and test access; tolerance/temperature/DC bias calculations, reviewed schematic and BOM signed.
- 4.3: Production-intent outline, stackup, antenna matching/keep-outs, switcher layout, cable interfaces and fixtures reviewed; DRC/ERC and CM DFM accepted. No speculative changes after freeze without ECO.
- 4.4: Production resin, surface/texture, shrink/tolerances, fastening, draft/parting/ejection, undercuts, gasket, pigtail molding or grommet strategy, USB sealing, membrane bond lands and grill process finalized. Humidity and acoustic stack validated; tooling scope includes any separate strain-relief/insert tools.
- 4.5: DFMEA and DVP&R link failures to tests: water paths, membrane detachment/blockage, cable pull, user interface, thermal, battery, radio, vehicle transients and recovery; test severities and quantitative pass limits signed before formal runs.
- 4.6: Supplier confirms T1/T2 definitions, cavities, tool steel/life/ownership, resin, inspection points, trial videos/data, samples, ECO turnaround, capacity, shipping and holiday calendar. Texture/irreversible steel changes held until fit acceptance.
- 4.7: Controlled Rev2 electrical and mechanical release and PO approval. Freeze intended antennas, cables, resin, SIM/service scope and certification configuration. Long-lead commitments explicitly approved by operator.
- 5.1: Controlled Rev2 lot with serial/lot traceability, inspection and approved exact BOM; proposed 30 boards sized to qualification plan.
- 5.2: Received boards match released configuration and allocation; incoming results logged.
- 5.3: Pinned ESP32/nRF/modem/NCS versions, Rev2 hardware profile, production-intent power policy, logging and RF test modes; shared contracts/protobuf and dashboard/carportpy compatibility matrix. NTN launch decision implemented. Separate software backlog owns development.
- 5.4: Current-limited power-up, basic rails/current/USB/debug/radio checks pass; traceable Rev2 units, firmware, cables and declared electrical envelope released to parallel lab work. Printed shell and hand-cut screen/ePTFE permitted for tests whose results do not depend on final materials/process. Full fix verification continues on separate allocated units.
- 5.5: Repeat affected power/fault tests, flash/debug recovery, supply margin and radio/sensor checks; compare Rev1 findings and confirm final component variants. Newly discovered Rev3 requirement is an ECO and schedule replan, not hidden rework.
- 5.6: Mold progress evidence and tool acceptance checkpoints; approved resin and inserts available. This is 20 supplier working days, excluding provisional closure; no claim that all overseas vendors meet it.
- 5.7: As-molded samples from intended resin, cavity IDs, molding parameters, dimensional FAI and cosmetic/warp/sink observations; fit PCB and pigtail locally before sending samples. Proposed 20 sets plus membrane coupons.
- 5.8: Samples and FAI received with revision/cavity traceability; retain supplier reference set.
- 5.9: Evaluate tolerances, fasteners, seam/USB/pigtail, pull/bend, button/RGB/dev access, vent/grill assembly, mic/RH and final antenna behavior with Rev2. Collect change list before tool correction release; first molded parts are not preproduction approval.
- 5.10: T1 loop target 6-8 weeks after freeze without supplier closure; baseline uses 20 + 5 supplier workdays, 5 calendar days transit and 5 engineering workdays evaluation. Electrical availability may drive later finish; holiday impact is explicit in supplier calendar.
- 5.11: Use Rev2 boards with printed housing, intended antennas/cables and documented handmade screen/ePTFE for early emissions/coexistence/GNSS scans. Track limitations; this pre-scan does not certify molded resin, final bonding/seal or antenna/mechanical equivalence. T1 lab sample release confirms representative setup before formal radiated work.
- 6.1: Signed tool/assembly correction list and required electrical ECO. Baseline assumes minor corrections, no PCB respin or new mold. Major changes trigger explicit additional loop and renewed certification impact review.
- 6.2: Steel-safe corrections, approved finish/texture, vent application fixture and cure, grill retention, cable strain relief and sealing process incorporated; updated controlled drawing and inspection plan.
- 6.3: Final resin/cavity/process samples and dimensional FAI accepted for dispatch; proposed 60 assemblies covers lab/qualification plus spares. Supplier trial uses factory working days, with no assumed weekend overtime.
- 6.4: Final T2 samples and FAI received with revision/cavity/lot traceability; incoming damage/count checks complete.
- 6.5: Repeat affected dimensional, sealing/cable, thermal, mic/RH, RF/GNSS and power tests. Final resin/adhesive/cable/antenna/PCB/firmware configuration logged. Manufacturing repeatability compared across cavities/builds.
- 6.6: T2 loop target 4-6 weeks from correction release: 10 supplier workdays correction + 2 supplier workdays trial + 5 calendar days shipping + 10 engineering workdays evaluation. Candidate accepted for preproduction; Rev2/T1 formal campaigns are already running. T2 configuration and process changes enter explicit qualification delta review before market release.

| ID | Activity | Type | Duration | Start | Finish | Predecessors | Planned start | Planned finish | Total float | Free float |
| --- | --- | --- | --- | --- | --- | --- | --- | --- | --- | --- |
| 7 | **07 - Rev2 / T1 qualification in parallel with T2 tooling** |  | 76d | 2027-03-01 | 2027-06-16 |  | 2026-11-02 | 2026-11-02 | 10d | 0d |
| 7.1 | Confirm lab bookings, sample matrix and regulatory configuration |  | 5d | 2027-03-01 | 2027-03-05 | 4.7, 1.3 | 2026-11-02 | 2026-11-06 | 18d | 0d |
| 7.2 | Accept representative T1 assemblies for formal lab work |  | 2d | 2027-04-16 | 2027-04-19 | 5.10, 7.1, 5.11 | 2026-11-02 | 2026-11-03 | 11d | 0d |
| 7.3 | Rev2 vehicle power qualification - prototype housing allowed |  | 10d | 2027-03-30 | 2027-04-12 | 5.4, 7.1 | 2026-11-02 | 2026-11-13 | 41d | 5d |
| 7.4 | T1 accessible-assembly ESD and enclosed thermal confirmation |  | 5d | 2027-04-20 | 2027-04-26 | 7.2, 7.3 | 2026-11-02 | 2026-11-06 | 36d | 26d |
| 7.5 | T1 enclosure, environmental and cable qualification |  | 20d | 2027-04-20 | 2027-05-17 | 7.2 | 2026-11-02 | 2026-11-27 | 21d | 11d |
| 7.6 | T1 US FCC / Canada ISED host RF, emissions and exposure assessment |  | 30d | 2027-04-20 | 2027-06-01 | 7.2, 5.3 | 2026-11-02 | 2026-12-11 | 11d | 0d |
| 7.7 | Rev2 cellular/operator and conditional NTN conducted / protocol campaign |  | 20d | 2027-03-30 | 2027-04-26 | 5.4, 4.1, 7.1 | 2026-11-02 | 2026-11-27 | 26d | 0d |
| 7.8 | T1 cellular OTA / antenna and provider acceptance completion |  | 10d | 2027-04-27 | 2027-05-10 | 7.7, 7.2 | 2026-11-02 | 2026-11-13 | 26d | 15d |
| 7.9 | Complete Bluetooth product qualification |  | 10d | 2027-03-30 | 2027-04-12 | 5.4, 5.3 | 2026-11-02 | 2026-11-13 | 46d | 35d |
| 7.10 | Battery, transport, material and product safety documentation |  | 15d | 2027-03-08 | 2027-03-29 | 4.7, 7.1 | 2026-11-02 | 2026-11-20 | 56d | 45d |
| 7.11 | Preliminary T2 qualification change-impact review |  | 3d | 2027-05-19 | 2027-05-21 | 6.4 | 2026-11-02 | 2026-11-04 | 17d | 7d |
| 7.12 | Prepare labels, installation instructions and compliance file |  | 10d | 2027-06-02 | 2027-06-15 | 7.6, 7.8, 7.9, 7.10 | 2026-11-02 | 2026-11-13 | 11d | 1d |
| 7.13 | Final T2 qualification disposition and affected retest reserve |  | 10d | 2027-06-03 | 2027-06-16 | 6.6, 7.6, 7.8, 7.3, 7.4, 7.5, 7.9, 7.10, 7.11 | 2026-11-02 | 2026-11-13 | 10d | 0d |
| 7.14 | G6 - Qualification and US/Canada release evidence accepted | milestone | 0d | 2027-06-16 | 2027-06-16 | 7.12, 7.13, 7.9, 6.6 | 2026-11-02 | 2026-11-02 | 10d |  |
| 8 | **08 - Manufacturing system and software handoff gates** |  | 86d | 2027-03-01 | 2027-06-30 |  | 2026-11-02 | 2026-11-02 | 0d |  |
| 8.1 | Design production programming and end-of-line fixtures |  | 10d | 2027-03-01 | 2027-03-12 | 4.7, 1.5 | 2026-11-02 | 2026-11-13 | 46d | 5d |
| 8.2 | Build and correlate fixtures with golden/reference units |  | 15d | 2027-04-09 | 2027-04-29 | 8.1, 5.5 | 2026-11-02 | 2026-11-20 | 31d | 23d |
| 8.3 | External gate - Factory firmware, provisioning and test tools |  | 20d | 2027-03-22 | 2027-04-19 | 5.3, 8.1 | 2026-11-02 | 2026-11-27 | 41d | 31d |
| 8.4 | External gate - Integrated product release candidate |  | 30d | 2027-03-22 | 2027-05-03 | 5.3, 4.1 | 2026-11-02 | 2026-12-11 | 41d |  |
| 8.5 | Create assembly SOPs, quality control and training package |  | 10d | 2027-06-03 | 2027-06-16 | 6.6, 8.2, 8.3 | 2026-11-02 | 2026-11-13 | 10d |  |
| 8.6 | Approve production material availability and logistics plan |  | 20d | 2027-06-03 | 2027-06-30 | 6.6, 1.4, 4.1 | 2026-11-02 | 2026-11-27 | 0d |  |
| 8.7 | G7 - Controlled pilot build readiness | milestone | 0d | 2027-06-30 | 2027-06-30 | 8.5, 8.6, 8.2, 8.3, 8.4, 7.14 | 2026-11-02 | 2026-11-02 | 0d |  |
| 9 | **09 - Pilot, production release and ramp** |  | 56d | 2027-07-01 | 2027-09-21 |  | 2026-11-02 | 2026-11-02 | 0d |  |
| 9.1 | Run PVT pilot on intended overseas production line |  | 10d | 2027-07-01 | 2027-07-14 | 8.7 | 2026-11-02 | 2026-11-13 | 0d |  |
| 9.2 | Ship pilot units and verify receiving / fulfillment process |  | 5d | 2027-07-15 | 2027-07-19 | 9.1 | 2026-11-02 | 2026-11-06 | 0d |  |
| 9.3 | Supervised US/Canada vehicle pilot and soak |  | 15d | 2027-07-20 | 2027-08-10 | 9.2 | 2026-11-02 | 2026-11-20 | 0d |  |
| 9.4 | Close pilot defects and approve yield / quality evidence |  | 5d | 2027-08-11 | 2027-08-17 | 9.3 | 2026-11-02 | 2026-11-06 | 0d |  |
| 9.5 | G8 - Authorize mass production release | milestone | 0d | 2027-08-17 | 2027-08-17 | 9.4, 7.14 | 2026-11-02 | 2026-11-02 | 0d |  |
| 9.6 | Build first mass-production lot and controlled ramp |  | 20d | 2027-08-18 | 2027-09-14 | 9.5 | 2026-11-02 | 2026-11-27 | 0d |  |
| 9.7 | First MP lot outgoing audit and shipment release |  | 5d | 2027-09-15 | 2027-09-21 | 9.6 | 2026-11-02 | 2026-11-06 | 0d |  |
| 9.8 | G9 - First mass-production lot ready to ship | milestone | 0d | 2027-09-21 | 2027-09-21 | 9.7 | 2026-11-02 | 2026-11-02 | 0d |  |

Notes:
- 7.1: Quote/confirm staggered lab slots: Rev2 arrival/quick bring-up for electrical and conducted work, T1 molded samples for enclosure-sensitive work, and a T2 delta window. Document grant IDs, antennas, firmware/RF modes, cable/pack variants, representative sample agreement, test allocation and change policy. Schedule is not evidence a booking already exists.
- 7.2: Lab signs sample/configuration matrix: molded production-intent resin, antenna location/cables, fastening, pigtail/grill and ePTFE/adhesive stack with recorded dimensions/process. Hand-cut/applied parts can be accepted when they represent the intended controlled assembly method; printed materials do not establish molded enclosure qualification. Nonrepresentative items remain provisional and trigger affected T2 tests; no assumption that T1 is already equivalent.
- 7.3: Run signed ISO 7637-2 / ISO 16750-2 electrical tests as scoped, reverse battery, crank, jump start, load dump, hot plug, shorts and USB/source combinations on traceable Rev2 with representative harness/pack/load and firmware. Printed housing is acceptable only where the lab records that enclosure/thermal/mounting effects cannot invalidate results. Board/port ESD may start; final accessible-assembly ESD is a separate T1 task. Verify recovery/leakage; no blanket automotive-certified claim.
- 7.4: Complete enclosure-dependent accessible-point ESD, USB/pigtail/button/seam discharge paths and worst-case enclosed thermal/radio-load checks on representative T1. Cross-reference early Rev2 power results; repeat affected tests where T1 grounding, mounting, heat flow or wiring differs. Final T2 changes require delta review.
- 7.5: Run approved environmental/cable/membrane DVP&R on lab-accepted production-intent molded T1 assemblies: temperature/humidity/condensation/cycles, vibration/shock/drop, ingress target, scoped fluid/UV, pull/flex and connector/button life. Measure acoustic/RH response and bonding/grill performance before/after. Record controlled hand-assembly method where representative; substitute material or process results are provisional. T2 delta review determines repeats; long-duration aging adds explicit time.
- 7.6: Test/assess lab-accepted representative Rev2/T1 configuration against applicable rules and module grant restrictions, antenna gains/bands, simultaneous transmit modes, RF exposure and host emissions. Formal radiated results require representative mechanics; printed parts alone do not establish final conformity. Obtain reports/filing-route conclusion; final applicability to T2 is decided at explicit delta gate.
- 7.7: Begin applicable PTCRB/IoT/operator route on verified Rev2 and selected module/modem/NCS/SIM/provider: conducted RF, network/protocol, provisioning and SIM lifecycle work that does not require final enclosure. Printed housing may support bench work with lab agreement. OTA/antenna-dependent acceptance follows on T1; include conditional NTN service tests or documented disabled feature scope.
- 7.8: Complete required antenna/OTA and selected-carrier/provider acceptance on representative Rev2/T1 assembly, incorporating early conducted/protocol results. NTN approval evidence is included if selected. Record exact accepted hardware/firmware/antenna configuration; T2 changes are checked at the delta gate.
- 7.9: Company membership, qualified-design reuse/testing route, product identity and submission complete; retain product qualification record before market distribution.
- 7.10: Confirm actual cell/pack chemistry/configuration and applicable safety evaluation, protection/charging temperature behavior; UN 38.3 test summary for shipped lithium configuration and packaging requirements where applicable, supplier safety files, resin flammability and material declarations. New/modified pack testing requires a separate quoted loop; module approvals do not cover this.
- 7.11: Compare incoming T2 configuration with tested Rev2/T1 and identify likely affected reports, tests and filings while T2 evaluation and lab campaigns continue. This is preliminary: lab/quality final carry-forward approval awaits T2 acceptance and completed initial campaigns in the final disposition and retest task.
- 7.12: Prepare applicable US/Canada IDs/labels and Canadian bilingual notices as required, antenna/install separation, approved operating environment/power/accessories and provider scope. Reference Rev2/T1 reports and update to final T2 after delta/retest; final document approval occurs at G6. Expansion markets require fresh assessment.
- 7.13: After T2 acceptance, preliminary impact review and all initial campaigns, lab and quality approve final carry-forward or identify and complete affected tests, filings and operator acceptances. Reserve 10 working days for final disposition, one minor retest cycle and report/document updates. Major changes require a longer explicit loop; release remains blocked until the final configuration is covered.
- 7.14: Signed qualification reports and required authorizations/acceptances cover the exact final T2 sale configuration. T2 delta disposition and affected retests closed, final labels/manuals approved, and NTN inclusion/deferment explicit before customer distribution. Earlier Rev2/T1 results are carried forward only with documented lab/quality agreement.
- 8.1: Fixture design covers protected power, contact access, ESP32 USB/UART and nRF SWD/modem programming, serial/MAC/IMEI/SIM association, rail/current tests, radio/GNSS checks, sensor/mic/RH, buttons/RGB and leak/vent tests where appropriate. Throughput and calibration/reference strategy defined.
- 8.2: Fixtures delivered, limits derived from qualification, reference/failing-unit studies demonstrate detection, gauge repeatability assessed and station/firmware logs retained. Destructive qualification and end-of-line screens have distinct coverage.
- 8.3: Versioned manufacturing images, RF test modes, locked test protocols, fixture automation/dashboard diagnostics, protected factory identity flow, authorized provisioning and serial/IMEI/SIM records; pass/fail output schema and calibration persistence. No private keys or credentials in build package/logs.
- 8.4: Versioned ESP32/nRF/shared/protobuf, mobile tools/onboarding/OTA, dashboard and AWS contracts pass cross-repo integration: cellular/Wi-Fi/BLE paths, location, recording/relay, secure ownership, updates, factory reset/calibration retention, recovery and low power. Feature maturity is not inferred from README. Separate software project manages scope and iterations.
- 8.5: Work instructions for membrane cleanliness/bond/cure, grill/screen retention, torque, seals/pigtail/USB, ESD/rework and traceability; incoming/supplier quality, PFMEA/control plan, calibration, first-article approval and operator training. Golden unit and tooling/fixture backups retained.
- 8.6: Approved AVL, alternatives via ECO, allocation and forecast for radios/SIMs/antenna/resin/ePTFE/adhesive/cable/battery; no speculative full MP purchase. Pilot materials authorized; freight/customs/battery transport plan and supplier change notifications defined.
- 8.7: Released exact hardware/firmware/BOM/work instructions, calibrated validated test stations, material, required compliance evidence and trained operators. Approve proposed PVT lot and quality targets before build.
- 9.1: Suggested 100-unit lot uses intended staff, tools, resin/process and end-of-line tests. Record first-pass yield, defects/rework, cycle time, cavity/lot/serial traceability and process capability where sample size supports it; retain golden/reference units.
- 9.2: Pilot import, packaging, handling and shipment records verified; random receiving audit matches station records and serial/SIM identities.
- 9.3: Representative vehicles/installations and routes exercise cellular/GNSS/Wi-Fi/BLE, power/crank/sleep, heat/condensation, onboarding/OTA/recovery and optional approved NTN; retain logs with consent. Three weeks is a discovery pilot, not lifetime reliability proof.
- 9.4: Critical/major issues closed with retest and ECO impact assessment; baseline proposed targets >=95% first-pass yield, 100% functional screen pass before ship and zero unresolved critical defects require owner approval. Verify RMA/repair/OTA support and traceability.
- 9.5: Operator approves production quantity/PO against demand, cash, capacity and accepted quality. Qualified configuration and golden sample locked; change control, stop-ship and field monitoring owners assigned.
- 9.6: Size of first MP lot set at G8; control plan, sampling/audit, complete serialized test records, yield monitoring and supplier capacity demonstrated; hold nonconforming units.
- 9.7: Outgoing functional/visual/packaging audit and documentation pass, approved labels/manuals/certification configuration checked; ship only released units with traceability and support readiness.
- 9.8: First MP lot accepted and released for shipment; subsequent ramp managed by yield, demand and field performance. Freight to customer is outside this ready-to-ship milestone.
